# Programacion_Proyecto

Schedule from MS Project, 2022-10-03 to 2022-10-28, status date 2022-10-05, 12 hours a day, costs in S/., A marks actual dates.

## Calendars

- calendario_henry: Mon-Sat 08:00-13:00, 14:00-19:00, 20:00-22:00; Sun off.

## Resources

| Resource | Rate |
| --- | --- |
| Data Engineer | 20 |
| Data Analist | 15 |
| Data Science | 20 |
| Project Manager | 30 |

## Schedule

| ID | WBS | Task | Type | Duration | Start | Finish | Predecessors | Complete | Remaining | Baseline start | Baseline finish | Baseline duration | Total slack | Resources | Work | Actual work | Cost | Baseline cost | Actual cost |
| --- | --- | --- | --- | --- | --- | --- | --- | --- | --- | --- | --- | --- | --- | --- | --- | --- | --- | --- | --- |
| 1 | 1 | **Proyecto_Data_Flights** |  | 23d | 2022-10-03 A | 2022-10-28 |  | 96% | 0.98d | 2022-10-03 | 2022-10-25 | 20d | 0d |  | 228h | 228h | 4,950 | 2,580 | 4,950 |
| 2 | 1.1 | Inicio | milestone | 0d | 2022-10-03 | 2022-10-03 |  |  |  | 2022-10-03 | 2022-10-03 |  | 23d |  |  |  |  |  |  |
| 3 | 1.2 | **Semana1** |  | 6d | 2022-10-03 A | 2022-10-08 A | 2 | 100% |  | 2022-10-03 | 2022-10-08 | 6d |  |  | 228h | 228h | 4,950 | 2,580 | 4,950 |
| 4 | 1.2.1 | Organización del grupo |  | 1d | 2022-10-03 A | 2022-10-03 A |  | 100% |  | 2022-10-03 | 2022-10-03 | 1d |  | Project Manager | 12h | 12h | 360 | 360 | 360 |
| 5 | 1.2.2 | Estructuración del calendario |  | 1d | 2022-10-03 A | 2022-10-03 A |  | 100% |  |  |  |  |  | Data Engineer; Data Science; Data Analist | 36h | 36h | 660 |  | 660 |
| 6 | 1.2.3 | Revision de la data |  | 6h | 2022-10-04 A | 2022-10-04 A | 4, 5 | 100% |  | 2022-10-04 | 2022-10-04 | 1d |  | Data Engineer | 6h | 6h | 120 | 240 | 120 |
| 7 | 1.2.4 | Busqueda de mas Data |  | 6h | 2022-10-04 A | 2022-10-04 A | 6 | 100% |  |  |  |  |  | Data Analist | 6h | 6h | 90 |  | 90 |
| 8 | 1.2.5 | Investigacion de las herramientas tecnologicas |  | 6h | 2022-10-04 A | 2022-10-04 A | 7SS | 100% |  |  |  |  |  | Data Science; Project Manager | 12h | 12h | 300 |  | 300 |
| 9 | 1.2.6 | Definicion de KPI's y Objetivos |  | 1d | 2022-10-05 A | 2022-10-05 A | 8 | 100% |  |  |  |  |  | Data Analist; Project Manager | 24h | 24h | 540 |  | 540 |
| 10 | 1.2.7 | Definicion de periodo temporal y bases de datos |  | 1d | 2022-10-05 A | 2022-10-05 A | 8 | 100% |  |  |  |  |  | Data Science; Data Engineer | 24h | 24h | 480 |  | 480 |
| 11 | 1.2.8 | Elaboración de Proyecto tentativo |  | 1d | 2022-10-06 A | 2022-10-06 A | 9, 10 | 100% |  |  |  |  |  | Data Analist; Data Engineer; Data Science; Project Manager | 48h | 48h | 1,020 |  | 1,020 |
| 12 | 1.2.9 | Presentación de Proyecto tentativo |  | 1d | 2022-10-07 A | 2022-10-07 A | 11 | 100% |  | 2022-10-07 | 2022-10-07 | 1d |  | Project Manager | 12h | 12h | 360 | 540 | 360 |
| 13 | 1.2.10 | Levantamiento de Observaciones |  | 1d | 2022-10-08 A | 2022-10-08 A | 12 | 100% |  | 2022-10-08 | 2022-10-08 | 1d |  | Data Engineer; Data Analist; Data Science; Project Manager | 48h | 48h | 1,020 | 1,020 | 1,020 |
| 14 | 1.3 | **Semana2** |  | 6d | 2022-10-10 A | 2022-10-15 A | 3 | 100% |  | 2022-10-08 | 2022-10-13 | 5d |  |  |  |  |  |  |  |
| 15 | 1.3.1 | Investigación de las herramientas para la arquitectura |  | 1d | 2022-10-10 A | 2022-10-10 A |  | 100% |  |  |  |  |  |  |  |  |  |  |  |
| 16 | 1.3.2 | Diseño de la arquitectura |  | 1d | 2022-10-11 A | 2022-10-11 A | 3, 15 | 100% |  | 2022-10-08 | 2022-10-08 | 1d? |  |  |  |  |  |  |  |
| 17 | 1.3.3 | Elaboracion del entorno de extracción de datos |  | 1d | 2022-10-12 A | 2022-10-12 A | 16 | 100% |  | 2022-10-08 | 2022-10-08 | 1d? |  |  |  |  |  |  |  |
| 18 | 1.3.4 | Elaboracion del entorno de transformación de datos |  | 1d | 2022-10-13 A | 2022-10-13 A | 17 | 100% |  | 2022-10-08 | 2022-10-08 | 1d? |  |  |  |  |  |  |  |
| 19 | 1.3.5 | Elaboracion del entorno de carga de datos |  | 1d | 2022-10-14 A | 2022-10-14 A | 18 | 100% |  | 2022-10-08 | 2022-10-08 | 1d? |  |  |  |  |  |  |  |
| 20 | 1.3.6 | Levantamiento de Observaciones |  | 1d | 2022-10-15 A | 2022-10-15 A | 19 | 100% |  |  |  |  |  |  |  |  |  |  |  |
| 21 | 1.4 | **Semana3** |  | 6d | 2022-10-17 A | 2022-10-22 A | 14 | 100% |  | 2022-10-14 | 2022-10-19 | 5d |  |  |  |  |  |  |  |
| 22 | 1.4.1 | Carga del DW en software de visualizacion |  | 1d | 2022-10-17 A | 2022-10-17 A | 14 | 100% |  | 2022-10-14 | 2022-10-14 | 1d? |  |  |  |  |  |  |  |
| 23 | 1.4.2 | Revision de la data en Power Query |  | 1d | 2022-10-18 A | 2022-10-18 A | 22 | 100% |  | 2022-10-14 | 2022-10-14 | 1d? |  |  |  |  |  |  |  |
| 24 | 1.4.3 | Implementación de visualizacion de datos |  | 1d | 2022-10-19 A | 2022-10-19 A | 23 | 100% |  | 2022-10-14 | 2022-10-14 | 1d? |  |  |  |  |  |  |  |
| 25 | 1.4.4 | Diseño del Dashboard |  | 1d | 2022-10-20 A | 2022-10-20 A | 24 | 100% |  | 2022-10-14 | 2022-10-14 | 1d? |  |  |  |  |  |  |  |
| 26 | 1.4.5 | Complementación de Dashboard |  | 1d | 2022-10-21 A | 2022-10-21 A | 25 | 100% |  | 2022-10-14 | 2022-10-14 | 1d? |  |  |  |  |  |  |  |
| 27 | 1.4.6 | Levantamiento de Observaciones |  | 1d | 2022-10-22 A | 2022-10-22 A | 26 | 100% |  |  |  |  |  |  |  |  |  |  |  |

| ID | WBS | Task | Type | Duration | Start | Finish | Predecessors | Complete | Remaining | Baseline start | Baseline finish | Baseline duration | Total slack | Free slack |
| --- | --- | --- | --- | --- | --- | --- | --- | --- | --- | --- | --- | --- | --- | --- |
| 28 | 1.5 | **Semana4** |  | 5d | 2022-10-24 A | 2022-10-28 | 21 | 67% | 1.67d | 2022-10-20 | 2022-10-25 | 5d |  |  |
| 29 | 1.5.1 | Revision del funcionamiento de l proceso |  | 1d | 2022-10-24 A | 2022-10-24 A | 21 | 100% |  | 2022-10-20 | 2022-10-20 | 1d? |  |  |
| 30 | 1.5.2 | Verificacion del proceso completo |  | 1d | 2022-10-25 A | 2022-10-25 A | 29 | 100% |  | 2022-10-20 | 2022-10-20 | 1d? |  |  |
| 31 | 1.5.3 | Presentación del Proyecto |  | 1d | 2022-10-26 | 2022-10-26 | 30 |  |  | 2022-10-20 | 2022-10-20 | 1d? | 2d | 0d |
| 32 | 1.5.4 | Final | milestone | 0d | 2022-10-26 | 2022-10-26 | 31 |  |  |  |  |  | 2d |  |
